# Thi công kè chắn đất bê tông đổ tại chỗ tuyến 3 đoạn từ cọc 88 đến cọc 126

Schedule from MS Project XML, 2026-08-12 to 2026-10-27.
Công ty TNHH Giang Long

## Calendars

- 7 ngay/tuan: Mon-Sun 08:00-12:00, 13:00-17:00. Exceptions (off unless hours are given): 2026-09-01 (Nghi le 01/09), 2026-09-02 (Nghi le 02/09).

## Schedule

| ID | WBS | Task | Duration | Start | Finish | Predecessors | Constraint |
| --- | --- | --- | --- | --- | --- | --- | --- |
| 1 | 1 | **A. CHUẨN BỊ MẶT BẰNG** | 19d | 2026-08-18 | 2026-09-07 |  |  |
| 2 | 1.1 | **Đắp đê quai, tạo sàn thi công, thoát nước tạm** | 17d | 2026-08-18 | 2026-09-05 |  |  |
| 3 | 1.1.1 | Đắp đê quai, tạo sàn thi công, thoát nước tạm - cọc 88-98 | 2d | 2026-08-18 | 2026-08-19 |  | start no earlier than 2026-08-18 |
| 4 | 1.1.2 | Đắp đê quai, tạo sàn thi công, thoát nước tạm - cọc 98-108 | 2d | 2026-08-23 | 2026-08-24 |  | start no earlier than 2026-08-23 |
| 5 | 1.1.3 | Đắp đê quai, tạo sàn thi công, thoát nước tạm - cọc 108-118 | 2d | 2026-08-28 | 2026-08-29 |  | start no earlier than 2026-08-28 |
| 6 | 1.1.4 | Đắp đê quai, tạo sàn thi công, thoát nước tạm - cọc 118-126 | 2d | 2026-09-04 | 2026-09-05 |  | start no earlier than 2026-09-04 |
| 7 | 1.2 | **Đào bùn, nạo vét lạch phía núi (mở mặt bằng)** | 17d | 2026-08-20 | 2026-09-07 |  |  |
| 8 | 1.2.1 | Đào bùn, nạo vét lạch phía núi (mở mặt bằng) - cọc 88-98 | 2d | 2026-08-20 | 2026-08-21 | 3 | start no earlier than 2026-08-20 |
| 9 | 1.2.2 | Đào bùn, nạo vét lạch phía núi (mở mặt bằng) - cọc 98-108 | 2d | 2026-08-25 | 2026-08-26 | 4 | start no earlier than 2026-08-25 |
| 10 | 1.2.3 | Đào bùn, nạo vét lạch phía núi (mở mặt bằng) - cọc 108-118 | 2d | 2026-08-30 | 2026-08-31 | 5 | start no earlier than 2026-08-30 |
| 11 | 1.2.4 | Đào bùn, nạo vét lạch phía núi (mở mặt bằng) - cọc 118-126 | 2d | 2026-09-06 | 2026-09-07 | 6 | start no earlier than 2026-09-06 |
| 12 | 2 | **B. THI CÔNG CỌC** | 32d | 2026-08-14 | 2026-09-16 |  |  |
| 13 | 2.1 | **Cung cấp, nghiệm thu đầu vào cọc BT300x300** | 26d | 2026-08-14 | 2026-09-10 |  |  |
| 14 | 2.1.1 | Cung cấp, nghiệm thu đầu vào cọc BT300x300 - cọc 88-98 | 11d | 2026-08-14 | 2026-08-24 |  | start no earlier than 2026-08-14 |
| 15 | 2.1.2 | Cung cấp, nghiệm thu đầu vào cọc BT300x300 - cọc 98-108 | 11d | 2026-08-19 | 2026-08-29 |  | start no earlier than 2026-08-19 |
| 16 | 2.1.3 | Cung cấp, nghiệm thu đầu vào cọc BT300x300 - cọc 108-118 | 11d | 2026-08-24 | 2026-09-05 |  | start no earlier than 2026-08-24 |
| 17 | 2.1.4 | Cung cấp, nghiệm thu đầu vào cọc BT300x300 - cọc 118-126 | 11d | 2026-08-29 | 2026-09-10 |  | start no earlier than 2026-08-29 |
| 18 | 2.2 | **Đào móng, vận chuyển đất đào** | 18d | 2026-08-22 | 2026-09-10 |  |  |
| 19 | 2.2.1 | Đào móng, vận chuyển đất đào - cọc 88-98 | 3d | 2026-08-22 | 2026-08-24 | 8 | start no earlier than 2026-08-22 |
| 20 | 2.2.2 | Đào móng, vận chuyển đất đào - cọc 98-108 | 3d | 2026-08-27 | 2026-08-29 | 9 | start no earlier than 2026-08-27 |
| 21 | 2.2.3 | Đào móng, vận chuyển đất đào - cọc 108-118 | 3d | 2026-09-03 | 2026-09-05 | 10 | start no earlier than 2026-09-03 |
| 22 | 2.2.4 | Đào móng, vận chuyển đất đào - cọc 118-126 | 3d | 2026-09-08 | 2026-09-10 | 11 | start no earlier than 2026-09-08 |
| 23 | 2.3 | **Ép cọc, cắt đầu cọc** | 21d | 2026-08-25 | 2026-09-16 |  |  |
| 24 | 2.3.1 | Ép cọc, cắt đầu cọc - cọc 88-98 | 6d | 2026-08-25 | 2026-08-30 | 19, 14 | start no earlier than 2026-08-25 |
| 25 | 2.3.2 | Ép cọc, cắt đầu cọc - cọc 98-108 | 6d | 2026-08-30 | 2026-09-06 | 20, 15 | start no earlier than 2026-08-30 |
| 26 | 2.3.3 | Ép cọc, cắt đầu cọc - cọc 108-118 | 6d | 2026-09-06 | 2026-09-11 | 21, 16 | start no earlier than 2026-09-06 |
| 27 | 2.3.4 | Ép cọc, cắt đầu cọc - cọc 118-126 | 6d | 2026-09-11 | 2026-09-16 | 22, 17 | start no earlier than 2026-09-11 |

| ID | WBS | Task | Duration | Start | Finish | Predecessors | Constraint |
| --- | --- | --- | --- | --- | --- | --- | --- |
| 28 | 3 | **C. KẾT CẤU KÈ BÊ TÔNG** | 25d | 2026-09-03 | 2026-09-27 |  |  |
| 29 | 3.1 | **Ván khuôn, đổ bê tông lót M100** | 17d | 2026-09-03 | 2026-09-19 |  |  |
| 30 | 3.1.1 | Ván khuôn, đổ bê tông lót M100 - cọc 88-98 | 2d | 2026-09-03 | 2026-09-04 | 24 | start no earlier than 2026-09-03 |
| 31 | 3.1.2 | Ván khuôn, đổ bê tông lót M100 - cọc 98-108 | 2d | 2026-09-08 | 2026-09-09 | 25 | start no earlier than 2026-09-08 |
| 32 | 3.1.3 | Ván khuôn, đổ bê tông lót M100 - cọc 108-118 | 2d | 2026-09-13 | 2026-09-14 | 26 | start no earlier than 2026-09-13 |
| 33 | 3.1.4 | Ván khuôn, đổ bê tông lót M100 - cọc 118-126 | 2d | 2026-09-18 | 2026-09-19 | 27 | start no earlier than 2026-09-18 |
| 34 | 3.2 | **Cốt thép, ván khuôn, khe lún** | 21d | 2026-09-05 | 2026-09-25 |  |  |
| 35 | 3.2.1 | Cốt thép, ván khuôn, khe lún - cọc 88-98 | 6d | 2026-09-05 | 2026-09-10 | 30 | start no earlier than 2026-09-05 |
| 36 | 3.2.2 | Cốt thép, ván khuôn, khe lún - cọc 98-108 | 6d | 2026-09-10 | 2026-09-15 | 31 | start no earlier than 2026-09-10 |
| 37 | 3.2.3 | Cốt thép, ván khuôn, khe lún - cọc 108-118 | 6d | 2026-09-15 | 2026-09-20 | 32 | start no earlier than 2026-09-15 |
| 38 | 3.2.4 | Cốt thép, ván khuôn, khe lún - cọc 118-126 | 6d | 2026-09-20 | 2026-09-25 | 33 | start no earlier than 2026-09-20 |
| 39 | 3.3 | **Đổ bê tông M300 bền sunfat** | 17d | 2026-09-11 | 2026-09-27 |  |  |
| 40 | 3.3.1 | Đổ bê tông M300 bền sunfat - cọc 88-98 | 2d | 2026-09-11 | 2026-09-12 | 35 | start no earlier than 2026-09-11 |
| 41 | 3.3.2 | Đổ bê tông M300 bền sunfat - cọc 98-108 | 2d | 2026-09-16 | 2026-09-17 | 36 | start no earlier than 2026-09-16 |
| 42 | 3.3.3 | Đổ bê tông M300 bền sunfat - cọc 108-118 | 2d | 2026-09-21 | 2026-09-22 | 37 | start no earlier than 2026-09-21 |
| 43 | 3.3.4 | Đổ bê tông M300 bền sunfat - cọc 118-126 | 2d | 2026-09-26 | 2026-09-27 | 38 | start no earlier than 2026-09-26 |
| 44 | 4 | **D. HOÀN TRẢ, HOÀN THIỆN** | 29d | 2026-09-21 | 2026-10-19 |  |  |
| 45 | 4.1 | **Đắp hoàn trả hố móng, lu nền** | 20d | 2026-09-21 | 2026-10-10 |  |  |
| 46 | 4.1.1 | Đắp hoàn trả hố móng, lu nền - cọc 88-98 | 5d | 2026-09-21 | 2026-09-25 | 40 | start no earlier than 2026-09-21 |
| 47 | 4.1.2 | Đắp hoàn trả hố móng, lu nền - cọc 98-108 | 5d | 2026-09-26 | 2026-09-30 | 41 | start no earlier than 2026-09-26 |
| 48 | 4.1.3 | Đắp hoàn trả hố móng, lu nền - cọc 108-118 | 5d | 2026-10-01 | 2026-10-05 | 42 | start no earlier than 2026-10-01 |
| 49 | 4.1.4 | Đắp hoàn trả hố móng, lu nền - cọc 118-126 | 5d | 2026-10-06 | 2026-10-10 | 43 | start no earlier than 2026-10-06 |
| 50 | 4.2 | **Đắp đá xô chân tường chắn** | 20d | 2026-09-26 | 2026-10-15 |  |  |
| 51 | 4.2.1 | Đắp đá xô chân tường chắn - cọc 88-98 | 5d | 2026-09-26 | 2026-09-30 | 46 | start no earlier than 2026-09-26 |
| 52 | 4.2.2 | Đắp đá xô chân tường chắn - cọc 98-108 | 5d | 2026-10-01 | 2026-10-05 | 47 | start no earlier than 2026-10-01 |
| 53 | 4.2.3 | Đắp đá xô chân tường chắn - cọc 108-118 | 5d | 2026-10-06 | 2026-10-10 | 48 | start no earlier than 2026-10-06 |
| 54 | 4.2.4 | Đắp đá xô chân tường chắn - cọc 118-126 | 5d | 2026-10-11 | 2026-10-15 | 49 | start no earlier than 2026-10-11 |

| ID | WBS | Task | Duration | Start | Finish | Predecessors | Constraint |
| --- | --- | --- | --- | --- | --- | --- | --- |
| 55 | 4.3 | **Hoàn thiện nạo vét lạch phía núi** | 19d | 2026-10-01 | 2026-10-19 |  |  |
| 56 | 4.3.1 | Hoàn thiện nạo vét lạch phía núi - cọc 88-98 | 4d | 2026-10-01 | 2026-10-04 | 51 | start no earlier than 2026-10-01 |
| 57 | 4.3.2 | Hoàn thiện nạo vét lạch phía núi - cọc 98-108 | 4d | 2026-10-06 | 2026-10-09 | 52 | start no earlier than 2026-10-06 |
| 58 | 4.3.3 | Hoàn thiện nạo vét lạch phía núi - cọc 108-118 | 4d | 2026-10-11 | 2026-10-14 | 53 | start no earlier than 2026-10-11 |
| 59 | 4.3.4 | Hoàn thiện nạo vét lạch phía núi - cọc 118-126 | 4d | 2026-10-16 | 2026-10-19 | 54 | start no earlier than 2026-10-16 |
| 60 | 5 | **E. CHUNG TOÀN TUYẾN** | 75d | 2026-08-12 | 2026-10-27 |  |  |
| 61 | 5.1 | Biện pháp thi công trọn gói | 75d | 2026-08-12 | 2026-10-27 |  | start no earlier than 2026-08-12 |
| 62 | 5.2 | Nghiệm thu hoàn thành toàn gói | 2d | 2026-10-26 | 2026-10-27 | 56, 57, 58, 59 | start no earlier than 2026-10-26 |
| 63 | 5.3 | Bàn giao công trình và hồ sơ | 1d | 2026-10-27 | 2026-10-27 | 62 | start no earlier than 2026-10-27 |
